How a schedule from an exported table changed from version to version. A marks actual dates.

## Version 1 (saved 2025-10-10)

Note of the change: chore: update VSCode settings to remove default formatter and modify research timeline CSV for improved task organization

| ID | Task | Start | Finish |
| --- | --- | --- | --- |
| T1.M1 | PhD Proposal Exam | 2025-12-19 | T1.9,T1.22 |
| T1.0 | Meet with Advisor - Finalize Timeline | 2025-09-09 |  |
| T1.1 | Draft Timeline v1 | 2025-08-29 | T1.0 |
| T1.2 | Develop Specific Aims & Outline | 2025-09-02 | T1.0 |
| T1.3 | Submit Outline to Advisor | 2025-09-05 | T1.2 |
| T1.4 | Define Committee & Schedule Exam | 2025-09-10 |  |
| T1.5 | Write Research Strategy | 2025-09-15 |  |
| T1.6 | Condense Proposal Draft | 2025-10-14 | T1.0 |
| T1.6a | Confirm Exam Date | 2025-09-28 | T1.4 |
| T1.7 | Finalize Proposal & Schedule | 2025-10-28 | T1.6 |
| T1.7a | Write Specific Aims & Research Strategy | 2025-10-07 | T1.2 |
| T1.8 | Send Proposal to Committee | 2025-11-12 | T1.7 |
| T1.8a | Write Methods & Timeline | 2025-11-11 |  |
| T1.9 | Create Proposal Presentation | 2025-12-01 | T1.8 |
| T1.9a | Complete Proposal Document | 2025-12-01 | T1.8a,T1.14 |
| T1.10 | Submit Final Proposal Document | 2025-12-17 | T1.M1 |
| T1.10a | Email Proposal to Committee | 2025-11-28 | T1.9a,T1.6a |
| T1.11 | Create Presentation | 2025-12-08 | T1.10 |
| T1.12 | Incorporate Revisions | 2025-12-23 | T1.M1 |
| T1.13 | Align Seed Laser | 2025-09-02 |  |
| T1.14 | Restore Amplified Output | 2025-09-09 | T1.13 |
| T1.15 | Verify Pulse Duration | 2025-10-01 | T1.14 |
| T1.16 | Align Imaging System | 2025-10-08 | T1.15 |
| T1.17 | Confirm Live Imaging Requirements | 2025-10-15 | T1.16 |
| T1.18 | Align Laser Through Microscope | 2025-09-26 | T1.16 |
| T1.19 | Image USAF Target | 2025-10-01 | T1.18 |
| T1.20 | Acquire Preliminary In Vivo Images | 2025-10-07 | T1.19 |
| T1.21 | Submit Annual Progress Report | 2025-09-03 |  |
| T1.22 | Update Committee Membership | 2025-09-13 |  |
| T1.23 | Confirm Doctoral Candidacy | 2025-09-06 |  |
| T2.M1 | Dual-Color Platform Operational | 2026-07-15 | T2.12 |
| T2.M2 | Data Acquisition Complete | 2026-12-06 | T2.26 |
| T2.1 | Plan Pilot Mice Cohort | 2025-10-14 | T1.5 |
| T2.2 | Design & Order AAV Vectors | 2025-10-21 | T2.1 |
| T2.3 | Receive AAV Vectors | 2025-12-20 | T2.2 |
| T2.4 | Install Cranial Windows & Inject AAV | 2026-02-01 | T1.17,T2.3,T1.12 |
| T2.5 | Monitor & Medicate Mice | 2026-02-27 | T2.4 |
| T2.6 | Acquire In Vivo Images | 2026-03-28 | T2.5 |
| T2.7 | Complete Pilot Datasets | 2026-04-16 | T2.6 |
| T2.8 | Process Pilot Data | 2026-04-21 | T2.6 |
| T2.9 | Design U-Net Architecture | 2026-05-01 | T2.8 |
| T2.10 | Implement U-Net Pipeline | 2026-05-28 | T2.9 |
| T2.11 | Configure Dual-Channel Imaging | 2026-04-19 | T2.7 |
| T2.12 | Configure LSCI | 2026-05-18 | T2.11 |
| T2.13 | Design Enhanced AAV | 2026-04-19 | T2.7 |
| T2.14 | Receive Enhanced AAV | 2026-07-18 | T2.13 |
| T2.15 | Compare Imaging Methods | 2026-05-23 | T2.11 |
| T2.16 | Establish Stroke Model | 2026-06-18 | T2.15 |
| T2.17 | Induce Stroke | 2026-06-26 | T2.16 |
| T2.18 | Acute Phase Imaging | 2026-07-08 | T2.17 |
| T2.19 | Transition Phase Imaging | 2026-07-20 | T2.18 |
| T2.20 | Early Chronic Phase Imaging | 2026-08-19 | T2.19 |
| T2.21 | Extended Chronic Imaging | 2026-09-16 | T2.20 |
| T2.22 | Adapt ML Pipeline | 2026-07-14 | T2.10 |
| T2.23 | Optimize ML Pipeline | 2026-08-18 | T2.22 |
| T2.24 | Complete Longitudinal Imaging | 2026-09-21 | T2.21 |
| T2.25 | Integrate LSCI Data | 2026-09-26 | T2.18,T2.19,T2.20,T2.21 |
| T2.26 | Analyze Stroke Data | 2026-10-26 | T2.25 |
| T2.35 | Implement Automated Backups | 2025-10-01 |  |
| T3.M1 | Manuscript Submissions Complete | 2026-12-20 | T3.8 |
| T3.1 | Write Methodology Manuscript | 2026-04-19 | T2.7 |
| T3.2 | Submit Methodology Paper | 2026-07-18 | T3.1 |
| T3.3 | Develop SLAVV-T Codebase | 2026-08-11 | T2.6 |
| T3.4 | Draft SLAVV-T Manuscript | 2026-11-11 | T3.3 |
| T3.5 | Submit SLAVV-T Manuscript | 2026-12-22 | T3.4 |
| T3.6 | Prepare Conference Presentation | 2026-12-10 | T2.26 |
| T3.7 | Write Research Paper | 2026-12-10 | T2.26 |
| T3.8 | Submit Research Paper | 2026-12-19 | T3.7 |
| T3.9a | AR Platform - Requirements & Design | 2026-08-01 |  |
| T3.9b | AR Platform - Core Development | 2026-11-01 | T3.9a |

| ID | Task | Start | Finish |
| --- | --- | --- | --- |
| T3.9c | AR Platform - Testing & Refinement | 2027-04-01 | T3.9b |
| T3.9d | AR Platform - Methods Paper Draft | 2027-07-01 | T3.9c |
| T4.M1a | Complete Dissertation Draft | 2027-05-13 | T4.5 |
| T4.M1 | Dissertation Complete | 2027-06-27 | T4.6 |
| T4.M2 | PhD Defense | 2027-07-14 | T4.7 |
| T4.M3 | Graduation | 2027-08-08 | T4.9 |
| T4.1 | Complete Progress Review | 2026-09-01 | T1.12 |
| T4.2 | Draft Introduction & Methods | 2027-01-01 | T2.26 |
| T4.2a | Draft Aim 1 Chapter | 2027-02-16 | T3.2 |
| T4.2b | Draft Aim 2/3 Chapter | 2027-03-16 | T3.8 |
| T4.3 | Write Introduction Chapter | 2026-12-19 | T1.12 |
| T4.4a | Write Methods Chapter | 2027-02-03 | T1.12 |
| T4.4b | Write Results - Aim 1 | 2027-03-16 | T4.4a |
| T4.4c | Write Results - Aims 2 & 3 | 2027-04-16 | T4.4b |
| T4.5 | Draft Dissertation Conclusions | 2027-04-16 | T4.2b |
| T4.5a1 | Write Discussion Chapter | 2027-04-16 | T1.12 |
| T4.5a2 | Write Conclusions & Future Work | 2027-06-01 | T4.5a1 |
| T4.5b | Final Committee Meeting | 2027-05-17 | T4.M1a |
| T4.6 | Complete Dissertation Draft | 2027-06-19 | T4.3,T4.4,T4.5 |
| T4.6a | Final Revisions | 2027-05-30 | T4.5b |
| T4.7 | Defend Dissertation | 2027-07-17 | T4.6a |
| T4.7a | Final Submission | 2027-07-16 | T4.M2 |
| T4.8 | Incorporate Committee Feedback | 2027-07-21 | T4.7 |
| T4.9 | Submit Final Dissertation | 2027-08-05 | T4.8 |
| T4.10b | TA Requirement - Spring 2026 | 2026-01-15 |  |
| T4.10c | TA Requirement - Summer 2026 | 2026-06-01 | T4.10b |
| T4.15 | Submit Graduation Application | 2027-01-01 | T4.2 |
| T4.16 | Submit Final Oral Exam Request | 2027-06-01 | T4.6 |

## Version 2 (saved 2025-10-13)

Note of the change: refactor: enhance CSV validation logic by adding milestone consistency checks, dependency cycle detection, and improving task ID format validation

Changed:

| ID | Task | Finish |
| --- | --- | --- |
| T4.6 | Complete Dissertation Draft | T4.3,T4.4,T4.5 → T4.3,T4.4c,T4.5 |

## Version 3 (saved 2025-10-20)

Note of the change: Consolidate repository: rename config file and organize generated directory

Added:

| ID | Task | Start |
| --- | --- | --- |
| T1.INFO | PhD Dissertation Planner Project Information | 2025-01-01 |
| T1.DESC | System Description and Capabilities | 2025-01-01 |
| T1.ARCH | Clean Architecture Implementation | 2025-01-01 |
| T1.DEPS | System Dependencies and Requirements | 2025-01-01 |
| T1.CONFIG | Configuration System and Presets | 2025-01-01 |
| T1.USAGE | Usage Instructions and Workflows | 2025-01-01 |
| T1.DEV | Development and Contributing Guidelines | 2025-01-01 |
| T1.TROUBLESHOOT | Troubleshooting and Common Issues | 2025-01-01 |
| T1.QUALITY | Code Quality and Optimization Tools | 2025-01-01 |
| T1.HISTORY | Development History and Completed Work | 2025-01-01 |
