How a schedule from an exported table changed from version to version. A marks actual dates.

## Version 1 (saved 2025-09-23)

Note of the change: chore: Remove obsolete project files and clean up directory structure

| ID | Task | Start | Finish |
| --- | --- | --- | --- |
| T1.1 | Draft timeline v1 for Tuesday review; bring printed and digital copies | 2025-08-29 |  |
| T1.2 | Develop 1-page Specific Aims and detailed outline following BME format requirements for PhD proposal | 2025-09-02 |  |
| T1.3 | Submit proposal outline to advisor before Monday deadline | 2025-09-05 | T1.2 |
| T1.4 | Define proposal committee and confirm availability; schedule oral exam date | 2025-09-10 |  |
| T1.5 | Write 12-page Research Strategy from outline per BME guidelines | 2025-09-15 |  |
| T1.6 | Confirm oral exam date scheduled; must send final proposal to committee ≥2 weeks prior | 2025-09-28 | T1.4 |
| T1.7 | Write 1-page Specific Aims and 12-page Research Strategy sections for proposal | 2025-10-28 |  |
| T1.8 | Write Methods and project timeline sections | 2025-11-11 |  |
| T1.9 | Complete full proposal document (~13 pages) with proper formatting and submit for review | 2025-12-01 | T1.8,T1.14 |
| T1.10 | Email proposal to committee ≥2 weeks before exam | 2025-11-28 | T1.9,T1.6 |
| T1.11 | Create slide deck and practice oral exam presentation | 2025-12-08 | T1.10 |
| T1.12 | Incorporate committee revisions into proposal and submit signed approval form | 2025-12-23 | T1.M1 |
| T1.13 | Align seed laser to reach ≥30 mW output in fiber core (pre-pump) | 2025-09-02 |  |
| T1.14 | Restore amplified output to ≥130 mW (previous benchmark performance level) | 2025-09-09 | T1.13 |
| T1.15 | Verify ≤200 fs pulse duration and log specifications | 2025-10-01 | T1.14 |
| T1.16 | Align imaging system using USAF target for optimal resolution before in vivo experiments | 2025-10-08 | T1.15 |
| T1.17 | Confirm laser and optics meet live imaging requirements | 2025-10-15 | T1.16 |
| T1.18 | Align laser through microscope optics | 2025-09-26 | T1.16 |
| T1.19 | Image Air Force target to validate resolution | 2025-10-01 | T1.18 |
| T1.20 | Acquire preliminary 6-panel tiled image in vivo | 2025-10-07 | T1.19 |
| T1.21 | Submit annual progress report (due early September) | 2025-09-03 |  |
| T1.22 | Update committee membership if needed and file Request for Change in Doctoral Committee form | 2025-09-13 |  |
| T1.23 | Ensure doctoral candidacy status is confirmed (should already be completed by 5th year) | 2025-09-06 |  |
| T1.M1 | PhD Proposal Exam - Defend proposal in oral examination | 2025-12-19 | T1.11,T1.22 |
| T2.1 | Plan ~3 pilot mice cohort with IACUC protocol confirmation and surgery slot booking | 2025-10-14 | T1.5 |
| T2.2 | Design and order AAV-mScarlet (vascular) and jRGECO1b (neuronal) vectors | 2025-10-21 | T2.1 |
| T2.3 | Receive AAV vectors and prepare for injections | 2025-12-20 | T2.2 |
| T2.4 | Install cranial windows and inject AAV in three pilot mice with staggered timing | 2026-02-01 | T1.17,T2.3,T1.12 |
| T2.5 | Monitor and medicate mice; maintain analgesia schedule | 2026-02-27 | T2.4 |
| T2.6 | Acquire in vivo images for all three mice comparing AAV fluorescence vs traditional dye injection methods | 2026-03-28 | T2.5 |
| T2.7 | Complete 3 pilot two-photon datasets | 2026-04-16 | T2.6 |
| T2.8 | Perform image registration and SNR analysis; calculate contrast metrics and refine imaging protocols | 2026-04-21 | T2.6 |
| T2.9 | Design U-Net architecture for vascular segmentation and prepare training datasets from pilot images | 2026-05-01 | T2.8 |
| T2.10 | Implement U-Net pipeline and test on pilot data | 2026-05-28 | T2.9 |
| T2.11 | Tune microscope optics for dual-channel two-photon imaging with spectral separation | 2026-04-19 | T2.7 |
| T2.12 | Configure LSCI for blood-flow measurements | 2026-05-18 | T2.11 |
| T2.13 | Design and order enhanced-expression AAV with tissue-specific enhancer for improved dual-label imaging | 2026-04-19 | T2.7 |
| T2.14 | Receive enhanced AAV and prepare for in vivo tests | 2026-07-18 | T2.13 |
| T2.15 | Systematically compare imaging depth; SNR; and contrast across different labeling methods in vivo | 2026-05-23 | T2.11 |
| T2.16 | Complete training and IACUC approval for stroke induction method (photothrombosis) | 2026-06-18 | T2.15 |
| T2.17 | Induce stroke in cohort to start Aim 3 imaging | 2026-06-26 | T2.16 |
| T2.18 | Conduct two-photon + LSCI imaging sessions in acute phase (0-1 week post-stroke) | 2026-07-08 | T2.17 |
| T2.19 | Conduct transition-phase imaging (2-4 weeks post-stroke) | 2026-07-20 | T2.18 |
| T2.20 | Conduct imaging sessions in early chronic phase (5-8 weeks post-stroke) | 2026-08-19 | T2.19 |
| T2.21 | Conduct extended chronic imaging (~12 weeks post-stroke) if needed | 2026-09-16 | T2.20 |
| T2.22 | Adapt machine learning segmentation pipeline for stroke dataset analysis and vascular feature detection | 2026-07-14 | T2.10 |
| T2.23 | Optimize ML pipeline performance and validate segmentation accuracy on stroke imaging data | 2026-08-18 | T2.22 |
| T2.24 | Complete all planned longitudinal imaging sessions for stroke study | 2026-09-21 | T2.21 |
| T2.25 | Integrate LSCI flow data with two-photon imaging data | 2026-09-26 | T2.18,T2.19,T2.20,T2.21 |
| T2.26 | Quantify microvascular network changes and neurovascular coupling dynamics from post-stroke imaging data | 2026-10-26 | T2.25 |
| T2.27 | Maintain detailed rig log for any alignment changes and communicate modifications to colleagues (Q1 2026) | 2025-09-01 |  |
| T2.28 | Maintain detailed rig log for any alignment changes and communicate modifications to colleagues (Q2 2026) | 2026-01-01 | T2.27 |
| T2.29 | Maintain detailed rig log for any alignment changes and communicate modifications to colleagues (Q3 2026) | 2026-04-01 | T2.28 |
| T2.30 | Maintain detailed rig log for any alignment changes and communicate modifications to colleagues (Q4 2026) | 2026-07-01 | T2.29 |
| T2.31 | Maintain detailed rig log for any alignment changes and communicate modifications to colleagues (Q1 2027) | 2026-10-01 |  |
| T2.32 | Maintain detailed rig log for any alignment changes and communicate modifications to colleagues (Q2 2027) | 2027-01-01 |  |
| T2.33 | Maintain detailed rig log for any alignment changes and communicate modifications to colleagues (Q3 2027) | 2027-04-01 |  |
| T2.34 | Maintain detailed rig log for any alignment changes and communicate modifications to colleagues (Q4 2027) | 2027-07-01 |  |
| T2.35 | Implement automated quality control checks and nightly backups | 2025-10-01 |  |
| T2.36 | Maintain and monitor automated quality control checks and nightly backups | 2026-01-01 | T2.35 |
| T2.37 | Maintain proficiency with cranial window surgeries and train others; ensure IACUC compliance | 2025-10-01 |  |
| T2.M1 | Dual-Color Platform Operational - Achieve operational status of the dual-color platform | 2026-07-18 | T2.12 |
| T2.M2 | Data Acquisition Complete - Complete all planned imaging studies | 2026-12-09 | T2.26 |
| T3.1 | Write manuscript on AAV-based vascular imaging methodology and pilot results from Aim 1 studies | 2026-04-19 | T2.7 |
| T3.2 | Submit methodology paper to journal | 2026-07-18 | T3.1 |
| T3.3 | Prepare conference talk/poster with results | 2026-12-10 | T2.26 |
| T3.4 | Write second research paper covering dual-color imaging platform and initial stroke study findings | 2026-12-10 | T2.26 |
| T3.5 | Submit second manuscript to journal | 2026-12-19 | T3.4 |
| T3.M1 | Manuscript Submissions Complete - All planned manuscripts submitted | 2026-12-23 | T3.5 |
| T4.1 | Complete yearly graduate student progress review with advisor due early September | 2026-09-01 | T1.12 |

| ID | Task | Start | Finish |
| --- | --- | --- | --- |
| T4.2 | PhD Dissertation & Defense - Write dissertation defend and complete graduation requirements | 2026-12-19 |  |
| T4.3 | Write dissertation Introduction chapter including literature review and study rationale for PhD thesis | 2026-12-19 | T1.12 |
| T4.4 | Write chapters detailing all three research aims including methods; experiments; data; and findings for dissertation | 2027-02-03 | T1.12 |
| T4.5 | Write final dissertation chapters summarizing findings; implications; and future research directions | 2027-02-03 | T1.12 |
| T4.6 | Complete PhD dissertation draft compiled and ready for committee review | 2027-06-19 | T4.3,T4.4,T4.5 |
| T4.7 | Defend dissertation in oral examination | 2027-07-17 | T4.6 |
| T4.8 | Incorporate committee feedback and revisions after defense; obtain final approval signatures | 2027-07-21 | T4.7 |
| T4.9 | Upload approved dissertation PDF and submit all required forms to Graduate School by deadline | 2027-08-05 | T4.8 |
| T4.10 | Serve as Teaching Assistant at least once before graduation (BME program requirement) | 2025-09-04 |  |
| T4.11 | Maintain full-time registration (9+ hours) for Spring 2026 semester | 2026-01-01 |  |
| T4.12 | Maintain full-time registration (9+ hours) for Fall 2026 semester | 2026-09-01 |  |
| T4.13 | Maintain full-time registration (9+ hours) for Spring 2027 semester | 2027-01-01 |  |
| T4.14 | Maintain full-time registration (9+ hours) for Summer 2027 semester | 2027-06-01 |  |
| T4.15 | Submit graduation application at beginning of final semester (required for summer 2027 graduation) | 2027-01-01 |  |
| T4.16 | Submit Request for Final Oral Exam form at least 2 weeks before defense date | 2027-06-01 |  |
| T4.17 | Plan and execute SPIE Student Chapter events and submit annual report by Dec 1 2026 | 2025-09-08 |  |
| T4.18 | Be punctual to meetings and injections; provide regular updates to advisor; take ownership of microscope | 2025-09-10 |  |
| T4.M1 | Dissertation Complete - Complete dissertation draft for committee review | 2027-06-30 | T4.6 |
| T4.M2 | PhD Defense - Successfully defend PhD dissertation | 2027-07-17 | T4.7 |
| T4.M3 | Graduation - Complete PhD program and graduate | 2027-08-11 | T4.9 |

## Version 2 (saved 2025-09-23)

Note of the change: refactor: Revise Research Timeline structure and update task details

Added:

| ID | Task | Start | Finish |
| --- | --- | --- | --- |
| T1.0 | Meet with Advisor to Finalize Revised Timeline | 2025-09-09 |  |
| T1.6a | Confirm Exam Date | 2025-09-28 | T1.4 |
| T1.7a | Write Specific Aims & Research Strategy | 2025-10-07 | T1.2 |
| T1.8a | Write Methods & Timeline | 2025-11-11 |  |
| T1.9a | Complete Proposal Document | 2025-12-01 | T1.8a,T1.14 |
| T1.10a | Email Proposal to Committee | 2025-11-28 | T1.9a,T1.6a |
| T3.6 | Prepare Conference Presentation | 2026-12-10 | T2.26 |
| T3.7 | Write Research Paper | 2026-12-10 | T2.26 |
| T3.8 | Submit Research Paper | 2026-12-19 | T3.7 |
| T3.9 | AR Vascular Platform | 2026-08-01 |  |
| T4.2a | Draft Aim 1 Chapter | 2027-02-16 | T3.2 |
| T4.2b | Draft Aim 2/3 Chapter | 2027-03-16 | T3.8 |
| T4.5a | Write Discussion & Conclusions | 2027-02-03 | T1.12 |
| T4.M1a | Complete Dissertation Draft | 2027-05-16 | T4.5 |
| T4.5b | Final Committee Meeting | 2027-05-17 | T4.M1a |
| T4.6a | Final Revisions | 2027-05-30 | T4.5b |
| T4.7a | Final Submission | 2027-07-16 | T4.M2 |

Changed:

| ID | Task | Start | Finish | Other |
| --- | --- | --- | --- | --- |
| T1.1 | Draft Timeline v1 |  | none → T1.0 | was named Draft timeline v1 for Tuesday review; bring printed and digital copies |
| T1.2 | Develop Specific Aims & Outline |  | none → T1.0 | was named Develop 1-page Specific Aims and detailed outline following BME format requirements for PhD proposal |
| T1.3 | Submit Outline to Advisor |  |  | was named Submit proposal outline to advisor before Monday deadline |
| T1.4 | Define Committee & Schedule Exam |  |  | was named Define proposal committee and confirm availability; schedule oral exam date |
| T1.5 | Write Research Strategy |  |  | was named Write 12-page Research Strategy from outline per BME guidelines |
| T1.6 | Condense Proposal Draft | 2025-09-28 → 2025-10-14 (+16d) | T1.4 → T1.0 | was named Confirm oral exam date scheduled; must send final proposal to committee ≥2 weeks prior |
| T1.7 | Finalize Proposal & Schedule |  | none → T1.6 | was named Write 1-page Specific Aims and 12-page Research Strategy sections for proposal |
| T1.8 | Send Proposal to Committee | 2025-11-11 → 2025-11-12 (+1d) | none → T1.7 | was named Write Methods and project timeline sections |
| T1.9 | Create Proposal Presentation |  | T1.8,T1.14 → T1.8 | was named Complete full proposal document (~13 pages) with proper formatting and submit for review |
| T1.10 | Submit Final Proposal Document | 2025-11-28 → 2025-12-17 (+19d) | T1.9,T1.6 → T1.M1 | was named Email proposal to committee ≥2 weeks before exam |
| T1.11 | Create Presentation |  |  | was named Create slide deck and practice oral exam presentation |
| T1.12 | Incorporate Revisions |  |  | was named Incorporate committee revisions into proposal and submit signed approval form |
| T1.13 | Align Seed Laser |  |  | was named Align seed laser to reach ≥30 mW output in fiber core (pre-pump) |
| T1.14 | Restore Amplified Output |  |  | was named Restore amplified output to ≥130 mW (previous benchmark performance level) |
| T1.15 | Verify Pulse Duration |  |  | was named Verify ≤200 fs pulse duration and log specifications |
| T1.16 | Align Imaging System |  |  | was named Align imaging system using USAF target for optimal resolution before in vivo experiments |
| T1.17 | Confirm Live Imaging Requirements |  |  | was named Confirm laser and optics meet live imaging requirements |
| T1.18 | Align Laser Through Microscope |  |  | was named Align laser through microscope optics |
| T1.19 | Image USAF Target |  |  | was named Image Air Force target to validate resolution |
| T1.20 | Acquire Preliminary In Vivo Images |  |  | was named Acquire preliminary 6-panel tiled image in vivo |
| T1.21 | Submit Annual Progress Report |  |  | was named Submit annual progress report (due early September) |
| T1.22 | Update Committee Membership |  |  | was named Update committee membership if needed and file Request for Change in Doctoral Committee form |
| T1.23 | Confirm Doctoral Candidacy |  |  | was named Ensure doctoral candidacy status is confirmed (should already be completed by 5th year) |
| T1.M1 | PhD Proposal Exam - Defend proposal in oral examination |  | T1.11,T1.22 → T1.9,T1.22 |  |
| T2.1 | Plan Pilot Mice Cohort |  |  | was named Plan ~3 pilot mice cohort with IACUC protocol confirmation and surgery slot booking |
| T2.2 | Design & Order AAV Vectors |  |  | was named Design and order AAV-mScarlet (vascular) and jRGECO1b (neuronal) vectors |
| T2.3 | Receive AAV Vectors |  |  | was named Receive AAV vectors and prepare for injections |
| T2.4 | Install Cranial Windows & Inject AAV |  |  | was named Install cranial windows and inject AAV in three pilot mice with staggered timing |
| T2.5 | Monitor & Medicate Mice |  |  | was named Monitor and medicate mice; maintain analgesia schedule |
| T2.6 | Acquire In Vivo Images |  |  | was named Acquire in vivo images for all three mice comparing AAV fluorescence vs traditional dye injection methods |
| T2.7 | Complete Pilot Datasets |  |  | was named Complete 3 pilot two-photon datasets |
| T2.8 | Process Pilot Data |  |  | was named Perform image registration and SNR analysis; calculate contrast metrics and refine imaging protocols |
| T2.9 | Design U-Net Architecture |  |  | was named Design U-Net architecture for vascular segmentation and prepare training datasets from pilot images |
| T2.10 | Implement U-Net Pipeline |  |  | was named Implement U-Net pipeline and test on pilot data |
| T2.11 | Configure Dual-Channel Imaging |  |  | was named Tune microscope optics for dual-channel two-photon imaging with spectral separation |
| T2.12 | Configure LSCI |  |  | was named Configure LSCI for blood-flow measurements |
| T2.13 | Design Enhanced AAV |  |  | was named Design and order enhanced-expression AAV with tissue-specific enhancer for improved dual-label imaging |
| T2.14 | Receive Enhanced AAV |  |  | was named Receive enhanced AAV and prepare for in vivo tests |
| T2.15 | Compare Imaging Methods |  |  | was named Systematically compare imaging depth; SNR; and contrast across different labeling methods in vivo |
| T2.16 | Establish Stroke Model |  |  | was named Complete training and IACUC approval for stroke induction method (photothrombosis) |
| T2.17 | Induce Stroke |  |  | was named Induce stroke in cohort to start Aim 3 imaging |
| T2.18 | Acute Phase Imaging |  |  | was named Conduct two-photon + LSCI imaging sessions in acute phase (0-1 week post-stroke) |
| T2.19 | Transition Phase Imaging |  |  | was named Conduct transition-phase imaging (2-4 weeks post-stroke) |
| T2.20 | Early Chronic Phase Imaging |  |  | was named Conduct imaging sessions in early chronic phase (5-8 weeks post-stroke) |
| T2.21 | Extended Chronic Imaging |  |  | was named Conduct extended chronic imaging (~12 weeks post-stroke) if needed |
| T2.22 | Adapt ML Pipeline |  |  | was named Adapt machine learning segmentation pipeline for stroke dataset analysis and vascular feature detection |
| T2.23 | Optimize ML Pipeline |  |  | was named Optimize ML pipeline performance and validate segmentation accuracy on stroke imaging data |
| T2.24 | Complete Longitudinal Imaging |  |  | was named Complete all planned longitudinal imaging sessions for stroke study |
| T2.25 | Integrate LSCI Data |  |  | was named Integrate LSCI flow data with two-photon imaging data |
| T2.26 | Analyze Stroke Data |  |  | was named Quantify microvascular network changes and neurovascular coupling dynamics from post-stroke imaging data |
| T2.27 | Maintain Rig Log Q1 2026 |  |  | was named Maintain detailed rig log for any alignment changes and communicate modifications to colleagues (Q1 2026) |
| T2.28 | Maintain Rig Log Q2 2026 |  |  | was named Maintain detailed rig log for any alignment changes and communicate modifications to colleagues (Q2 2026) |
| T2.29 | Maintain Rig Log Q3 2026 |  |  | was named Maintain detailed rig log for any alignment changes and communicate modifications to colleagues (Q3 2026) |
| T2.30 | Maintain Rig Log Q4 2026 |  |  | was named Maintain detailed rig log for any alignment changes and communicate modifications to colleagues (Q4 2026) |
| T2.31 | Maintain Rig Log Q1 2027 |  | none → T2.30 | was named Maintain detailed rig log for any alignment changes and communicate modifications to colleagues (Q1 2027) |
| T2.32 | Maintain Rig Log Q2 2027 |  | none → T2.31 | was named Maintain detailed rig log for any alignment changes and communicate modifications to colleagues (Q2 2027) |
| T2.33 | Maintain Rig Log Q3 2027 |  | none → T2.32 | was named Maintain detailed rig log for any alignment changes and communicate modifications to colleagues (Q3 2027) |
| T2.34 | Maintain Rig Log Q4 2027 |  | none → T2.33 | was named Maintain detailed rig log for any alignment changes and communicate modifications to colleagues (Q4 2027) |
| T2.35 | Implement Automated Backups |  |  | was named Implement automated quality control checks and nightly backups |
| T2.36 | Maintain Automated Backups |  |  | was named Maintain and monitor automated quality control checks and nightly backups |
| T2.37 | Maintain Surgical Training |  |  | was named Maintain proficiency with cranial window surgeries and train others; ensure IACUC compliance |
| T3.1 | Write Methodology Manuscript |  |  | was named Write manuscript on AAV-based vascular imaging methodology and pilot results from Aim 1 studies |
| T3.2 | Submit Methodology Paper |  |  | was named Submit methodology paper to journal |
| T3.3 | Develop SLAVV-T Codebase | 2026-12-10 → 2026-08-11 (-121d) | T2.26 → T2.6 | was named Prepare conference talk/poster with results |
| T3.4 | Draft SLAVV-T Manuscript | 2026-12-10 → 2026-11-11 (-29d) | T2.26 → T3.3 | was named Write second research paper covering dual-color imaging platform and initial stroke study findings |
| T3.5 | Submit SLAVV-T Manuscript | 2026-12-19 → 2026-12-22 (+3d) |  | was named Submit second manuscript to journal |
| T3.M1 | Manuscript Submissions Complete - All planned manuscripts submitted |  | T3.5 → T3.8 |  |
| T4.1 | Complete Progress Review |  |  | was named Complete yearly graduate student progress review with advisor due early September |
| T4.2 | Draft Dissertation Introduction & Methods | 2026-12-19 → 2027-01-01 (+13d) | none → T2.26 | was named PhD Dissertation & Defense - Write dissertation defend and complete graduation requirements |
| T4.3 | Write Introduction Chapter |  |  | was named Write dissertation Introduction chapter including literature review and study rationale for PhD thesis |

| ID | Task | Start | Finish | Other |
| --- | --- | --- | --- | --- |
| T4.4 | Write Methods & Results Chapters |  |  | was named Write chapters detailing all three research aims including methods; experiments; data; and findings for dissertation |
| T4.5 | Draft Dissertation Conclusions | 2027-02-03 → 2027-04-16 (+72d) | T1.12 → T4.2b | was named Write final dissertation chapters summarizing findings; implications; and future research directions |
| T4.6 | Complete Dissertation Draft |  |  | was named Complete PhD dissertation draft compiled and ready for committee review |
| T4.7 | Defend Dissertation |  | T4.6 → T4.6a | was named Defend dissertation in oral examination |
| T4.8 | Incorporate Committee Feedback |  |  | was named Incorporate committee feedback and revisions after defense; obtain final approval signatures |
| T4.9 | Submit Final Dissertation |  |  | was named Upload approved dissertation PDF and submit all required forms to Graduate School by deadline |
| T4.10 | Complete Teaching Assistant Requirement |  |  | was named Serve as Teaching Assistant at least once before graduation (BME program requirement) |
| T4.11 | Maintain Spring 2026 Registration |  |  | was named Maintain full-time registration (9+ hours) for Spring 2026 semester |
| T4.12 | Maintain Fall 2026 Registration |  | none → T4.11 | was named Maintain full-time registration (9+ hours) for Fall 2026 semester |
| T4.13 | Maintain Spring 2027 Registration |  | none → T4.12 | was named Maintain full-time registration (9+ hours) for Spring 2027 semester |
| T4.14 | Maintain Summer 2027 Registration |  | none → T4.13 | was named Maintain full-time registration (9+ hours) for Summer 2027 semester |
| T4.15 | Submit Graduation Application |  | none → T4.2 | was named Submit graduation application at beginning of final semester (required for summer 2027 graduation) |
| T4.16 | Submit Final Oral Exam Request |  | none → T4.6 | was named Submit Request for Final Oral Exam form at least 2 weeks before defense date |
| T4.17 | SPIE Student Chapter Activities |  |  | was named Plan and execute SPIE Student Chapter events and submit annual report by Dec 1 2026 |
| T4.18 | Maintain Lab Responsibilities |  |  | was named Be punctual to meetings and injections; provide regular updates to advisor; take ownership of microscope |
